# Trabajo Final

Schedule from ProjectLibre, 2026-03-16 to 2026-10-28.

## Calendars

- Calendario Academico: Mon-Fri 08:00-13:00, 17:00-20:00; Sat 08:00-12:00, 13:00-17:00; Sun off. Exceptions (off unless hours are given): 2026-05-18 to 2026-05-19.

## Resources

| Resource |
| --- |
| No Asignado |
| Desarrollador |
| Asesor |
| Backend Hosting: Render (Plan Free) |
| Frontend Hosting: Vercel (Plan Hobby) |
| Base de Datos (SQL): Neon.tech o Supabase |
| Inteligencia Artificial: Google AI Studio (API de Gemini 1.5 Flash) |
| IDE: Visual Studio Code |
| Versionado: GitHub (Repositorio privado) |
| Dominio: Subdominios gratuitos de los proveedores |

## Schedule

| ID | WBS | Task | Duration | Start | Finish | Predecessors | Baseline start | Baseline finish | Resources |
| --- | --- | --- | --- | --- | --- | --- | --- | --- | --- |
| 1 | 1 | **Trabajo Final** | 193.62d | 2026-03-16 | 2026-10-28 |  | 2026-03-16 | 2026-07-17 |  |
| 2 | 1.1 | **1. Fase de requerimientos y análisis** | 15.62d | 2026-03-16 | 2026-04-02 |  | 2026-03-16 | 2026-04-01 |  |
| 3 | 1.1.1 | 1.1 Definición de Objetivos y Alcance | 1.5d | 2026-03-16 | 2026-03-17 |  | 2026-03-16 | 2026-03-17 | Desarrollador |
| 4 | 1.1.2 | 1.2 Análisis de Requerimientos (RF/RNF) | 3.33d | 2026-03-17 | 2026-03-20 | 3 | 2026-03-17 | 2026-03-20 | Desarrollador; Asesor [50%] |
| 5 | 1.1.3 | 1.3 Diseño del Modelo de Datos (DER) | 4.79d | 2026-03-20 | 2026-03-26 | 4 | 2026-03-20 | 2026-03-25 | Desarrollador; Base de Datos (SQL): Neon.tech o Supabase |
| 6 | 1.1.4 | 1.4 Elaboración de Diagramas UML (Clases y Actividades) | 6d | 2026-03-26 | 2026-04-02 | 5 | 2026-03-25 | 2026-04-01 | Desarrollador |
| 7 | 1.1.5 | 1.5 Documentación Técnica Aprobada | 0d | 2026-04-02 | 2026-04-02 | 6 | 2026-04-01 | 2026-04-01 |  |
| 8 | 1.2 | **2. Desarrollo del Core Backend (Módulo de Ingeniería)** | 78d | 2026-03-26 | 2026-06-26 | 5 | 2026-03-25 | 2026-05-14 |  |
| 9 | 1.2.1 | **2.1 Arquitectura de Software y Config. Entorno** | 10d | 2026-03-26 | 2026-04-07 | 5 | 2026-03-25 | 2026-03-31 |  |
| 10 | 1.2.1.1 | 2.1.1 Configuración de entorno FastAPI y Docker/Venv. | 6d | 2026-03-26 | 2026-04-02 | 5 |  |  | Desarrollador [50%]; Backend Hosting: Render (Plan Free); IDE: Visual Studio Code; Versionado: GitHub (Repositorio privado) |
| 11 | 1.2.1.2 | 2.1.2 Implementación de Middleware de Seguridad y JWT. | 4d | 2026-04-02 | 2026-04-07 | 10 |  |  |  |
| 12 | 1.2.2 | 2.2 Integración con Gemini API y Prompt Engineering | 20d | 2026-04-07 | 2026-04-30 | 11 | 2026-03-31 | 2026-04-11 | Desarrollador [50%]; Inteligencia Artificial: Google AI Studio (API de Gemini 1.5 Flash) |
| 13 | 1.2.3 | **2.3 Desarrollo de Microservicios de Generación** | 48d | 2026-04-30 | 2026-06-26 |  | 2026-04-11 | 2026-05-14 |  |
| 14 | 1.2.3.1 | 2.3.1 Generador de Presentaciones | 16d | 2026-04-30 | 2026-05-20 | 12 | 2026-04-11 | 2026-04-22 | Desarrollador [50%]; Backend Hosting: Render (Plan Free) |
| 15 | 1.2.3.2 | 2.3.2 Generador de Documentos y PDF | 16d | 2026-05-20 | 2026-06-08 | 14 | 2026-04-22 | 2026-05-04 | Desarrollador [50%]; Backend Hosting: Render (Plan Free) |
| 16 | 1.2.3.3 | 2.3.3 Generador de Planillas de Datos | 16d | 2026-06-08 | 2026-06-26 | 15 | 2026-05-04 | 2026-05-14 | Desarrollador [50%]; Backend Hosting: Render (Plan Free) |
| 17 | 1.3 | 2.4 Implementación del Módulo RAG | 24d | 2026-06-26 | 2026-07-24 | 16 | 2026-05-14 | 2026-05-29 | Desarrollador [50%]; Base de Datos (SQL): Neon.tech o Supabase; Inteligencia Artificial: Google AI Studio (API de Gemini 1.5 Flash) |
| 18 | 1.4 | 2.5 Backend y Motor de IA Listos (MVP) | 0d | 2026-07-24 | 2026-07-24 | 17 | 2026-05-29 | 2026-05-29 |  |
| 19 | 1.5 | **3. Desarrollo de Interfaz de Usuario (Frontend)** | 35d | 2026-07-24 | 2026-09-03 |  | 2026-03-31 | 2026-05-26 |  |
| 20 | 1.5.1 | 3.1 Setup de Proyecto React + Vite | 8d | 2026-07-24 | 2026-08-03 | 18 | 2026-03-31 | 2026-04-08 | Desarrollador; IDE: Visual Studio Code; Frontend Hosting: Vercel (Plan Hobby) |
| 21 | 1.5.2 | **3.2 Desarrollo de Componentes Base** | 8d | 2026-08-03 | 2026-08-12 |  | 2026-04-08 | 2026-04-17 |  |
| 22 | 1.5.2.1 | 3.2.1 Diseño de Layout "Side-by-Side" | 4d | 2026-08-03 | 2026-08-07 | 20 |  |  |  |
| 23 | 1.5.2.2 | 3.2.2 Implementación de formularios de carga de archivos. | 4d | 2026-08-07 | 2026-08-12 | 22 |  |  |  |
| 24 | 1.5.3 | 3.3 Integración de Chat y Consumo de APIs | 10d | 2026-08-12 | 2026-08-24 | 12, 23 | 2026-04-17 | 2026-04-29 | Desarrollador; Inteligencia Artificial: Google AI Studio (API de Gemini 1.5 Flash) |
| 25 | 1.5.4 | 3.4 Desarrollo del Visor de Archivos y Dashboard de BI | 9d | 2026-08-24 | 2026-09-03 | 16, 24 | 2026-05-14 | 2026-05-26 | Desarrollador; Base de Datos (SQL): Neon.tech o Supabase |
| 26 | 1.5.5 | 3.5 Integración Front-Back Completada | 0d | 2026-09-03 | 2026-09-03 | 25 | 2026-05-26 | 2026-05-26 |  |

| ID | WBS | Task | Duration | Start | Finish | Predecessors | Baseline start | Baseline finish | Resources |
| --- | --- | --- | --- | --- | --- | --- | --- | --- | --- |
| 27 | 1.6 | **4. Pruebas, Despliegue y Tesis** | 47d | 2026-09-03 | 2026-10-28 |  | 2026-05-29 | 2026-07-17 |  |
| 28 | 1.6.1 | 4.1 Elaboración de Plan de Pruebas y Casos | 10d | 2026-09-03 | 2026-09-15 | 17, 26 | 2026-05-29 | 2026-06-10 | Desarrollador |
| 29 | 1.6.2 | **4.2 Ejecución de Pruebas Unitarias e Integración** | 2d | 2026-09-15 | 2026-09-17 |  | 2026-06-10 | 2026-06-15 |  |
| 30 | 1.6.2.1 | 4.2.1 Pruebas de integración Front-Back (API). | 1d | 2026-09-15 | 2026-09-16 | 28 |  |  | Asesor; Desarrollador |
| 31 | 1.6.2.2 | 4.2.2 Pruebas de carga de documentos y respuesta RAG. | 1d | 2026-09-16 | 2026-09-17 | 30 |  |  | Asesor; Desarrollador |
| 32 | 1.6.3 | 4.3 Despliegue en Servidor Cloud | 9d | 2026-09-17 | 2026-09-28 | 31 | 2026-06-15 | 2026-06-24 | Desarrollador; Backend Hosting: Render (Plan Free); Frontend Hosting: Vercel (Plan Hobby); Base de Datos (SQL): Neon.tech o Supabase |
| 33 | 1.6.4 | 4.4 Elaboración de Manual de Usuario y Técnico | 6d | 2026-09-28 | 2026-10-05 | 32 | 2026-06-24 | 2026-07-01 | Desarrollador; Asesor [50%] |
| 34 | 1.6.5 | 4.5 Plataforma en Producción | 0d | 2026-10-05 | 2026-10-05 | 33 | 2026-06-24 | 2026-06-24 |  |
| 35 | 1.6.6 | 4.6 Redacción Final de Memoria de Tesis | 20d | 2026-10-05 | 2026-10-28 | 34 | 2026-06-24 | 2026-07-17 | Desarrollador |
| 36 | 1.6.7 | 5.Defensa de Tesis | 0d | 2026-10-28 | 2026-10-28 | 35 | 2026-07-17 | 2026-07-17 |  |
